# Proget gantt chart

Schedule from MS Project, 2023-08-17 to 2024-12-26, costs in €.

## Calendars

- Standard: Mon-Fri 09:00-13:00, 14:00-18:00; Sat-Sun off.

## Resources

| Resource | Rate |
| --- | --- |
| Italian Specialized Engineer | 120 |
| Italian Project Engineer | 140 |
| Indian Specialized Engineer | 60 |
| Indian Project Engineer | 70 |
| Purchasing Agent | 70 |
| Indian Team of workers | 65 |
| Italian team of workers | 320 |
| Single-spindle CNC machine | 340000 |
| Double-spindle CNC machine | 500000 |
| Intermediate washing station | 530000 |
| Final washing station | 970000 |
| Drilling machine | 270000 |
| Assembly station | 1100000 |
| Manipulator | 11000 |
| Gantry loader (including robots) | 96000 |
| Rotating table | 250000 |
| Lift/lower component | 16000 |
| powered conveyor | 70200 |
| overhead conveyor | 16200 |
| Owner |  |
| Logistics Service Provider |  |
| Supplier |  |

## Schedule

| ID | WBS | Task | Duration | Start | Finish | Predecessors | Total slack | Free slack | Constraint | Resources | Work | Cost |
| --- | --- | --- | --- | --- | --- | --- | --- | --- | --- | --- | --- | --- |
| 1 | 1 | **Aluminum cylinder heads project** | 355.1d? | 2023-08-17 | 2024-12-26 |  | -48d | 0d |  |  | 4251.68h | 387,401.42 |
| 2 | 1.1 | **ENGINEERING PHASE** | 100d | 2023-08-17 | 2024-01-03 |  | -48d | 0d |  |  | 416.08h | 54,085.42 |
| 3 | 1.1.1 | Detailed Engineering - Process | 52d | 2023-08-17 | 2023-10-27 |  | -48d | 0d | start no earlier than 2023-08-17 | Italian Project Engineer [50%]; Italian Specialized Engineer [50%] | 416h | 54,080 |
| 4 | 1.1.2 | Detailed Engineering - Layout | 48d | 2023-10-30 | 2024-01-03 | 3 | -48d | 0d | start no earlier than 2023-08-23 | Indian Specialized Engineer [0%]; Indian Project Engineer [0%] | 0.08h | 5.42 |
| 5 | 1.2 | **Purchase Process** | 64.5d? | 2023-10-30 | 2024-01-26 | 2 | 0d |  |  |  | 1120h | 78,400 |
| 6 | 1.2.1 | **CNC machine (double and single spindle)** | 16.5d? | 2024-01-04 | 2024-01-26 |  | 127.6d |  |  | Purchasing Agent; Supplier [0.1%] | 156h | 10,920 |
| 7 | 1.2.1.1 | Request for proposals | 2.5d? | 2024-01-04 | 2024-01-08 |  | 44.5d | 0d |  | Purchasing Agent [40%] | 8h | 560 |
| 8 | 1.2.1.2 | Waiting Period | 10d | 2024-01-08 | 2024-01-22 | 7 | 44.5d | 0d |  | Supplier [0.1%] |  |  |
| 9 | 1.2.1.3 | Competitive proposal analysis | 2d? | 2024-01-22 | 2024-01-24 | 8 | 44.5d | 0d |  | Purchasing Agent [50%] | 8h | 560 |
| 10 | 1.2.1.4 | Orders | 2d? | 2024-01-24 | 2024-01-26 | 9 | 44.5d | 0d | start no earlier than 2023-11-27 | Purchasing Agent [50%] | 8h | 560 |
| 11 | 1.2.2 | **Washing station** | 22d | 2023-10-31 | 2023-11-29 |  |  |  |  | Purchasing Agent; Supplier [0.1%] | 228h | 15,960 |
| 12 | 1.2.2.1 | Request for proposals | 2.5d | 2023-10-30 | 2023-11-01 |  | 132.5d | 0d | start no earlier than 2023-10-30 | Purchasing Agent | 20h | 1,400 |
| 13 | 1.2.2.2 | Waiting Period | 10d | 2023-11-01 | 2023-11-15 | 12 | 132.5d | 0d |  | Supplier [0.1%] |  |  |
| 14 | 1.2.2.3 | Competitive proposal analysis | 2d | 2023-11-15 | 2023-11-17 | 13 | 132.5d | 5.5d |  | Purchasing Agent | 16h | 1,120 |
| 15 | 1.2.2.4 | Orders | 2d | 2023-11-27 | 2023-11-28 | 14 | 127d | 0d | start no earlier than 2023-11-27 | Purchasing Agent | 16h | 1,120 |
| 16 | 1.2.3 | **Drilling machine** | 16.5d? | 2024-01-04 | 2024-01-26 |  | 171.6d |  |  | Purchasing Agent; Supplier [0.1%] | 184h | 12,880 |
| 17 | 1.2.3.1 | Request for proposals | 2.5d? | 2024-01-04 | 2024-01-08 |  | 88.5d | 0d | start no earlier than 2023-11-01 | Purchasing Agent | 20h | 1,400 |
| 18 | 1.2.3.2 | Waiting Period | 10d | 2024-01-08 | 2024-01-22 | 17 | 88.5d | 0d |  | Supplier [0.1%] |  |  |
| 19 | 1.2.3.3 | Competitive proposal analysis | 2d? | 2024-01-22 | 2024-01-24 | 18 | 88.5d | 0d |  | Purchasing Agent | 16h | 1,120 |
| 20 | 1.2.3.4 | Orders | 2d? | 2024-01-24 | 2024-01-26 | 19 | 88.5d | 0d | start no earlier than 2023-11-27 | Purchasing Agent | 16h | 1,120 |
| 21 | 1.2.4 | **Assembly station** | 16.5d? | 2024-01-04 | 2024-01-26 |  | 137.6d |  |  | Purchasing Agent; Supplier [0.1%] | 184h | 12,880 |
| 22 | 1.2.4.1 | Request for proposals | 2.5d? | 2024-01-04 | 2024-01-08 |  | 54.5d | 0d | start no earlier than 2023-11-01 | Purchasing Agent | 20h | 1,400 |
| 23 | 1.2.4.2 | Waiting Period | 10d | 2024-01-08 | 2024-01-22 | 22 | 54.5d | 0d |  | Supplier [0.1%] |  |  |
| 24 | 1.2.4.3 | Competitive proposal analysis | 2d? | 2024-01-22 | 2024-01-24 | 23 | 54.5d | 0d |  | Purchasing Agent | 16h | 1,120 |
| 25 | 1.2.4.4 | Orders | 2d? | 2024-01-24 | 2024-01-26 | 24 | 54.5d | 0d | start no earlier than 2023-11-27 | Purchasing Agent | 16h | 1,120 |

| ID | WBS | Task | Duration | Start | Finish | Predecessors | Total slack | Free slack | Constraint | Resources | Work | Cost |
| --- | --- | --- | --- | --- | --- | --- | --- | --- | --- | --- | --- | --- |
| 26 | 1.2.5 | **Gantry loaders** | 16.5d? | 2024-01-04 | 2024-01-26 |  | 142.6d |  |  | Purchasing Agent; Supplier [0.1%] | 184h | 12,880 |
| 27 | 1.2.5.1 | Request for proposals | 2.5d? | 2024-01-04 | 2024-01-08 |  | 59.5d | 0d | start no earlier than 2023-11-06 | Purchasing Agent | 20h | 1,400 |
| 28 | 1.2.5.2 | Waiting Period | 10d | 2024-01-08 | 2024-01-22 | 27 | 59.5d | 0d |  | Supplier [0.1%] |  |  |
| 29 | 1.2.5.3 | Competitive proposal analysis | 2d? | 2024-01-22 | 2024-01-24 | 28 | 59.5d | 0d |  | Purchasing Agent | 16h | 1,120 |
| 30 | 1.2.5.4 | Orders | 2d | 2024-01-24 | 2024-01-26 | 29 | 59.5d | 0d | start no earlier than 2023-11-29 | Purchasing Agent | 16h | 1,120 |
| 31 | 1.2.6 | **Material handling equipments** | 16.5d? | 2024-01-04 | 2024-01-26 |  | 107.6d |  |  | Purchasing Agent; Supplier [0.1%] | 184h | 12,880 |
| 32 | 1.2.6.1 | Request for proposals | 2.5d? | 2024-01-04 | 2024-01-08 |  | 24.5d | 0d | start no earlier than 2023-11-06 | Purchasing Agent | 20h | 1,400 |
| 33 | 1.2.6.2 | Waiting Period | 10d | 2024-01-08 | 2024-01-22 | 32 | 24.5d | 0d |  | Supplier [0.1%] |  |  |
| 34 | 1.2.6.3 | Competitive proposal analysis | 2d? | 2024-01-22 | 2024-01-24 | 33 | 24.5d | 0d |  | Purchasing Agent | 16h | 1,120 |
| 35 | 1.2.6.4 | Orders | 2d? | 2024-01-24 | 2024-01-26 | 34 | 24.5d | 0d | start no earlier than 2023-11-29 | Purchasing Agent | 16h | 1,120 |
| 36 | 1.3 | **Equipment Manufacturing Phase** | 172.5d | 2023-11-29 | 2024-07-26 |  | 107.6d | 0d |  |  |  |  |
| 37 | 1.3.1 | CNC machine (double and single spindle) | 110d | 2024-01-26 | 2024-06-28 | 10 | 44.5d |  |  | Supplier [0.1%] |  |  |
| 38 | 1.3.2 | Washing station | 70d | 2023-11-29 | 2024-03-05 | 15 | 127d |  |  | Supplier [0.1%] |  |  |
| 39 | 1.3.3 | Drilling machine | 66d | 2024-01-26 | 2024-04-29 | 20 | 88.5d |  |  | Supplier [0.1%] |  |  |
| 40 | 1.3.4 | Assembly Station | 100d | 2024-01-26 | 2024-06-14 | 25 | 54.5d |  |  | Supplier [0.1%] |  |  |
| 41 | 1.3.5 | Gantry loaders | 95d | 2024-01-26 | 2024-06-07 | 30 | 59.5d |  |  | Supplier [0.1%] |  |  |
| 42 | 1.3.6 | Material handling equipments | 130d | 2024-01-26 | 2024-07-26 | 35 | 24.5d |  | start no earlier than 2023-11-27 | Supplier [0.1%] |  |  |
| 43 | 1.4 | Transportation phase | 1d? | 2024-07-26 | 2024-07-29 | 36 | 24.5d |  | start no earlier than 2023-11-27 |  |  |  |
| 44 | 1.5 | **Civil works refurbishment erection phase** | 273.1d? | 2023-10-30 | 2024-11-14 |  | 0d |  |  |  | 2715.2h | 254,824 |
| 45 | 1.5.1 | Design Civil Works | 55d | 2024-01-04 | 2024-03-20 | 4 | 0d |  |  |  |  |  |
| 46 | 1.5.2 | Permits and Authorizations | 30d | 2024-03-21 | 2024-05-01 | 45 | 0d |  |  |  |  |  |
| 47 | 1.5.3 | Site Installation | 15d | 2024-03-21 | 2024-04-10 | 45 | 37d | 15d |  |  |  |  |
| 48 | 1.5.4 | Excavations & Foundations | 30d | 2024-05-02 | 2024-06-12 | 46, 47 | 0d |  |  |  |  |  |
| 49 | 1.5.5 | Structural Improvement | 35d | 2024-06-13 | 2024-07-31 | 48 | 0d |  |  |  |  |  |
| 50 | 1.5.6 | Industrial Flooring | 35d | 2024-08-01 | 2024-09-18 | 48, 49 | 0d |  |  |  |  |  |
| 51 | 1.5.7 | Finishes | 38d | 2024-09-19 | 2024-11-11 | 50 | 32.1d |  |  |  |  |  |

| ID | WBS | Task | Duration | Start | Finish | Predecessors | Total slack | Resources | Work | Cost |
| --- | --- | --- | --- | --- | --- | --- | --- | --- | --- | --- |
| 52 | 1.5.8 | **On site erection phase** | 220d? | 2023-10-30 | 2024-08-30 |  |  |  | 2715.2h | 254,824 |
| 53 | 1.5.8.1 | **OP10** | 40.1d? | 2024-09-19 | 2024-11-14 | 50 | 0d |  | 16.4h | 3,208 |
| 54 | 1.5.8.1.1 | Mechanical Installation | 30d? | 2024-09-19 | 2024-10-30 |  | 0d | Indian Team of workers [3.3%] | 8h | 520 |
| 55 | 1.5.8.1.2 | Connections | 3.4d? | 2024-10-31 | 2024-11-05 | 54 | 0d | Italian team of workers [29.4%] | 8h | 2,560 |
| 56 | 1.5.8.1.3 | Final Assembly | 6.7d? | 2024-11-05 | 2024-11-14 | 55 | 0d | Italian team of workers [0.7%] | 0.4h | 128 |
| 57 | 1.5.8.2 | **OP20** | 40.1d? | 2024-09-19 | 2024-11-14 | 50 | 0d |  | 269.88h | 25,161.6 |
| 58 | 1.5.8.2.1 | Mechanical Installation | 30d? | 2024-09-19 | 2024-10-30 |  | 10.1d | Indian Team of workers | 240h | 15,600 |
| 59 | 1.5.8.2.2 | Connections | 3.4d? | 2024-10-31 | 2024-11-05 | 54 | 6.7d | Italian team of workers | 27.2h | 8,704 |
| 60 | 1.5.8.2.3 | Final Assembly | 6.7d? | 2024-11-05 | 2024-11-14 | 55 | 0d | Italian team of workers [5%] | 2.68h | 857.6 |
| 61 | 1.5.8.3 | **OP30** | 40.1d? | 2024-09-19 | 2024-11-14 | 50 | 0d |  | 269.88h | 25,161.6 |
| 62 | 1.5.8.3.1 | Mechanical Installation | 30d? | 2024-09-19 | 2024-10-30 |  | 10.1d | Indian Team of workers | 240h | 15,600 |
| 63 | 1.5.8.3.2 | Connections | 3.4d? | 2024-10-31 | 2024-11-05 | 54 | 6.7d | Italian team of workers | 27.2h | 8,704 |
| 64 | 1.5.8.3.3 | Final Assembly | 6.7d? | 2024-11-05 | 2024-11-14 | 55 | 0d | Italian team of workers [5%] | 2.68h | 857.6 |
| 65 | 1.5.8.4 | **OP40** | 40.1d? | 2024-09-19 | 2024-11-14 | 50 | 0d |  | 269.88h | 25,161.6 |
| 66 | 1.5.8.4.1 | Mechanical Installation | 30d? | 2024-09-19 | 2024-10-30 |  | 10.1d | Indian Team of workers | 240h | 15,600 |
| 67 | 1.5.8.4.2 | Connections | 3.4d? | 2024-10-31 | 2024-11-05 | 54 | 6.7d | Italian team of workers | 27.2h | 8,704 |
| 68 | 1.5.8.4.3 | Final Assembly | 6.7d? | 2024-11-05 | 2024-11-14 | 55 | 0d | Italian team of workers [5%] | 2.68h | 857.6 |
| 69 | 1.5.8.5 | **OP50** | 40.1d? | 2024-09-19 | 2024-11-14 | 50 | 0d |  | 269.88h | 25,161.6 |
| 70 | 1.5.8.5.1 | Mechanical Installation | 30d? | 2024-09-19 | 2024-10-30 |  | 10.1d | Indian Team of workers | 240h | 15,600 |
| 71 | 1.5.8.5.2 | Connections | 3.4d? | 2024-10-31 | 2024-11-05 | 54 | 6.7d | Italian team of workers | 27.2h | 8,704 |
| 72 | 1.5.8.5.3 | Final Assembly | 6.7d? | 2024-11-05 | 2024-11-14 | 55 | 0d | Italian team of workers [5%] | 2.68h | 857.6 |
| 73 | 1.5.8.6 | **OP60** | 40.1d? | 2024-09-19 | 2024-11-14 | 50 | 0d |  | 269.88h | 25,161.6 |
| 74 | 1.5.8.6.1 | Mechanical Installation | 30d? | 2024-09-19 | 2024-10-30 |  | 10.1d | Indian Team of workers | 240h | 15,600 |
| 75 | 1.5.8.6.2 | Connections | 3.4d? | 2024-10-31 | 2024-11-05 | 54 | 6.7d | Italian team of workers | 27.2h | 8,704 |
| 76 | 1.5.8.6.3 | Final Assembly | 6.7d? | 2024-11-05 | 2024-11-14 | 55 | 0d | Italian team of workers [5%] | 2.68h | 857.6 |

| ID | WBS | Task | Duration | Start | Finish | Predecessors | Total slack | Resources | Work | Cost |
| --- | --- | --- | --- | --- | --- | --- | --- | --- | --- | --- |
| 77 | 1.5.8.7 | **OP70** | 40.1d? | 2024-09-19 | 2024-11-14 | 50 | 0d |  | 269.88h | 25,161.6 |
| 78 | 1.5.8.7.1 | Mechanical Installation | 30d? | 2024-09-19 | 2024-10-30 |  | 10.1d | Indian Team of workers | 240h | 15,600 |
| 79 | 1.5.8.7.2 | Connections | 3.4d? | 2024-10-31 | 2024-11-05 | 54 | 6.7d | Italian team of workers | 27.2h | 8,704 |
| 80 | 1.5.8.7.3 | Final Assembly | 6.7d? | 2024-11-05 | 2024-11-14 | 55 | 0d | Italian team of workers [5%] | 2.68h | 857.6 |
| 81 | 1.5.8.8 | **OP80** | 40.1d? | 2024-09-19 | 2024-11-14 | 50 | 0d |  | 269.88h | 25,161.6 |
| 82 | 1.5.8.8.1 | Mechanical Installation | 30d? | 2024-09-19 | 2024-10-30 |  | 10.1d | Indian Team of workers | 240h | 15,600 |
| 83 | 1.5.8.8.2 | Connections | 3.4d? | 2024-10-31 | 2024-11-05 | 54 | 6.7d | Italian team of workers | 27.2h | 8,704 |
| 84 | 1.5.8.8.3 | Final Assembly | 6.7d? | 2024-11-05 | 2024-11-14 | 55 | 0d | Italian team of workers [5%] | 2.68h | 857.6 |
| 85 | 1.5.8.9 | **OP90** | 40.1d? | 2024-09-19 | 2024-11-14 | 50 | 0d |  | 269.88h | 25,161.6 |
| 86 | 1.5.8.9.1 | Mechanical Installation | 30d? | 2024-09-19 | 2024-10-30 |  | 10.1d | Indian Team of workers | 240h | 15,600 |
| 87 | 1.5.8.9.2 | Connections | 3.4d? | 2024-10-31 | 2024-11-05 | 54 | 6.7d | Italian team of workers | 27.2h | 8,704 |
| 88 | 1.5.8.9.3 | Final Assembly | 6.7d? | 2024-11-05 | 2024-11-14 | 55 | 0d | Italian team of workers [5%] | 2.68h | 857.6 |
| 89 | 1.5.8.10 | **OP100** | 40.1d? | 2024-09-19 | 2024-11-14 | 50 | 0d |  | 269.88h | 25,161.6 |
| 90 | 1.5.8.10.1 | Mechanical Installation | 30d? | 2024-09-19 | 2024-10-30 |  | 10.1d | Indian Team of workers | 240h | 15,600 |
| 91 | 1.5.8.10.2 | Connections | 3.4d? | 2024-10-31 | 2024-11-05 | 54 | 6.7d | Italian team of workers | 27.2h | 8,704 |
| 92 | 1.5.8.10.3 | Final Assembly | 6.7d? | 2024-11-05 | 2024-11-14 | 55 | 0d | Italian team of workers [5%] | 2.68h | 857.6 |
| 93 | 1.5.8.11 | **OP110** | 40.1d? | 2024-09-19 | 2024-11-14 | 50 | 0d |  | 269.88h | 25,161.6 |
| 94 | 1.5.8.11.1 | Mechanical Installation | 30d? | 2024-09-19 | 2024-10-30 |  | 10.1d | Indian Team of workers | 240h | 15,600 |
| 95 | 1.5.8.11.2 | Connections | 3.4d? | 2024-10-31 | 2024-11-05 | 54 | 6.7d | Italian team of workers | 27.2h | 8,704 |
| 96 | 1.5.8.11.3 | Final Assembly | 6.7d? | 2024-11-05 | 2024-11-14 | 55 | 0d | Italian team of workers [5%] | 2.68h | 857.6 |
| 97 | 1.6 | Final line testing | 30d? | 2024-11-14 | 2024-12-26 | 53, 57, 61, 65, 69, 73, 77, 81, 85, 89, 93 | 0d | Italian Project Engineer [0.1%]; Italian team of workers [0.1%] | 0.4h | 92 |
